Schedule from MS Project, 2011-08-01 to 2011-11-14, 6 hours a day, A marks actual dates.

## Calendars

- Laboratorio II: Mon 16:00-22:00; Tue-Sun off. Exceptions (off unless hours are given): 2011-08-15, 2011-08-22, 2011-10-10.

## Resources

| Resource | Group |
| --- | --- |
| dev 1 | developers |
| dev 2 | developers |
| dev 3 | developers |
| Scrum Master |  |
| Manager 1 |  |
| Manager 2 |  |
| Manager 3 |  |

## Schedule

| ID | WBS | Task | Type | Duration | Start | Finish | Predecessors | Complete | Remaining | Total slack | Constraint | Resources | Work | Actual work |
| --- | --- | --- | --- | --- | --- | --- | --- | --- | --- | --- | --- | --- | --- | --- |
| 1 | 1 | **Qnet** |  | 13d? | 2011-08-01 A | 2011-11-14 |  | 16% | 10.91d? | 0d |  |  | 442h | 67.99h |
| 2 | 1.1 | Project start | milestone | 0d | 2011-08-01 | 2011-08-01 |  |  |  | 0.33d |  |  |  |  |
| 3 | 1.2 | **Setting enviroment** |  | 3.83d | 2011-08-01 A | 2011-09-05 |  | 52% | 1.84d | 0d |  |  | 69h | 35.88h |
| 4 | 1.2.1 | Asignacion de Recursos |  | 0.33d | 2011-08-01 A | 2011-08-01 A | 2 | 100% |  |  |  | dev 1; dev 2; dev 3 | 6h | 6h |
| 5 | 1.2.2 | Capacitación |  | 1.5d | 2011-08-01 A | 2011-09-05 | 4 | 44% | 0.84d | 0d |  | dev 1; dev 2; dev 3 | 27h | 11.88h |
| 6 | 1.2.3 | Set enviroment |  | 2d | 2011-08-08 A | 2011-08-29 | 4FS+4h | 50% | 1d | 0.83d | start no earlier than 2011-08-07 | dev 1; dev 2; dev 3 | 36h | 18h |
| 7 | 1.3 | Sprint 1 y 2 Planning Meeting |  | 0.17d | 2011-09-05 | 2011-09-05 | 3 |  |  | 0d |  | dev 1; dev 2; dev 3 | 3h |  |
| 8 | 1.4 | **Sprint 1 - Privacy & Security** |  | 1d | 2011-09-12 | 2011-09-12 | 7 |  |  | 0d |  |  | 18h |  |
| 9 | 1.4.1 | **Privacy tasks** |  | 0.33d | 2011-09-12 | 2011-09-12 |  |  |  | 0d |  |  | 2h |  |
| 10 | 1.4.1.1 | Verify terms and conditions approval |  | 0.33d | 2011-09-12 | 2011-09-12 |  |  |  | 0d |  | dev 3 | 2h |  |
| 11 | 1.4.2 | **Security Improvements** |  | 1d | 2011-09-12 | 2011-09-12 |  |  |  | 0d |  |  | 16h |  |
| 12 | 1.4.2.1 | Sql injection check |  | 0.67d | 2011-09-12 | 2011-09-12 | 9 |  |  | 0d |  | dev 3 | 4h |  |
| 13 | 1.4.2.2 | Captcha check |  | 1d | 2011-09-12 | 2011-09-12 | 7 |  |  | 0d |  | dev 1; dev 2 | 12h |  |
| 14 | 1.5 | End Sprint 1 | milestone | 0d | 2011-09-12 | 2011-09-12 | 11, 9 |  |  | 0d |  |  |  |  |
| 15 | 1.6 | **Sprint 2 - Social improvements** |  | 2d | 2011-09-19 | 2011-09-26 | 14 |  |  | 0d |  |  | 36h |  |
| 16 | 1.6.1 | User popularity ranking |  | 2d | 2011-09-19 | 2011-09-26 |  |  |  | 0d |  | dev 2 | 12h |  |
| 17 | 1.6.2 | Instant messages |  | 2d | 2011-09-19 | 2011-09-26 |  |  |  | 0d |  | dev 1; dev 3 | 24h |  |
| 18 | 1.7 | **Integracion Sprint 1 y 2** |  | 0.83d | 2011-10-03 | 2011-10-03 | 15 |  |  | 0d |  |  | 15h |  |
| 19 | 1.7.1 | Tests Sprint 1 y 2 |  | 0.42d | 2011-10-03 | 2011-10-03 |  |  |  | 0d |  | dev 3; dev 1; dev 2 | 7.5h |  |
| 20 | 1.7.2 | Correcciones Sprint 1 y 2 |  | 0.42d | 2011-10-03 | 2011-10-03 | 19 |  |  | 0d |  | dev 3; dev 1; dev 2 | 7.5h |  |
| 21 | 1.8 | End Sprint 2 | milestone | 0d | 2011-10-03 | 2011-10-03 | 18 |  |  | 5.17d |  |  |  |  |
| 22 | 1.9 | Sprint 3 Planning Meeting |  | 0.17d | 2011-10-03 | 2011-10-03 | 18 |  |  | 0d |  | dev 3; dev 1; dev 2 | 3h |  |
| 23 | 1.10 | **Sprint 3 - Miscellaneous** |  | 1.5d | 2011-10-17 | 2011-10-24 | 22 |  |  | 0d |  |  | 27h |  |
| 24 | 1.10.1 | Password recovery |  | 1.5d | 2011-10-17 | 2011-10-24 |  |  |  | 0d |  | dev 1 | 9h |  |
| 25 | 1.10.2 | Recommend to a friend |  | 1.5d | 2011-10-17 | 2011-10-24 |  |  |  | 0d |  | dev 2; dev 3 | 18h |  |

| ID | WBS | Task | Type | Duration | Start | Finish | Predecessors | Complete | Remaining | Total slack | Constraint | Resources | Work | Actual work |
| --- | --- | --- | --- | --- | --- | --- | --- | --- | --- | --- | --- | --- | --- | --- |
| 26 | 1.11 | **Integracion Sprint 3** |  | 1.17d | 2011-10-24 | 2011-10-31 | 23 |  |  | 0d |  |  | 21h |  |
| 27 | 1.11.1 | Tests Sprint 3 |  | 0.58d | 2011-10-24 | 2011-10-31 |  |  |  | 0d |  | dev 1; dev 2; dev 3 | 10.5h |  |
| 28 | 1.11.2 | Correcciones Sprint 3 |  | 0.58d | 2011-10-31 | 2011-10-31 | 27 |  |  | 0d |  | dev 1; dev 2; dev 3 | 10.5h |  |
| 29 | 1.12 | Release Meeting |  | 0.33d | 2011-10-31 | 2011-10-31 | 26 |  |  | 0d |  | dev 1; dev 2; dev 3 | 6h |  |
| 30 | 1.13 | Reserva Developers |  | 2d | 2011-11-07 | 2011-11-14 | 29 |  |  | 0d |  | dev 1; dev 2; dev 3 | 36h |  |
| 31 | 1.14 | Entrega Final (fin) | milestone | 0d | 2011-11-14 | 2011-11-14 | 30 |  |  | 0d | finish no earlier than 2011-11-14 |  |  |  |
| 32 | 1.15 | **Management** |  | 12.67d? | 2011-08-01 A | 2011-11-14 |  | 18% | 10.43d? | 0d |  |  | 208h | 32.11h |
| 33 | 1.15.1 | Project Management |  | 8.67d | 2011-08-01 A | 2011-11-14 | 2 | 15% | 7.37d | 0d |  | Scrum Master | 52h | 7.8h |
| 34 | 1.15.2 | Reserva Manager 1 |  | 8.67d | 2011-08-01 | 2011-11-14 | 2 |  |  | 0d |  | Manager 1 | 52h |  |
| 35 | 1.15.3 | **Testing** |  | 12.67d? | 2011-08-01 | 2011-11-14 | 2 |  |  | 0d |  |  | 52h |  |
| 36 | 1.15.3.1 | Definición de casos de prueba 1 |  | 1.33d? | 2011-08-01 | 2011-08-08 |  |  |  | 0d |  | Manager 2 | 8h |  |
| 37 | 1.15.3.2 | Testing 1 |  | 1.33d | 2011-08-29 | 2011-09-05 | 36 |  |  | 0d |  | Manager 2 | 8h |  |
| 38 | 1.15.3.3 | Definición de casos de prueba 2 |  | 1.5d? | 2011-09-12 | 2011-09-26 | 37 |  |  | 0d |  | Manager 2 | 9h |  |
| 39 | 1.15.3.4 | Testing 2 |  | 1.5d | 2011-09-26 | 2011-10-17 | 38 |  |  | 0d |  | Manager 2 | 9h |  |
| 40 | 1.15.3.5 | Definición de casos de prueba 3 |  | 1.5d? | 2011-10-17 | 2011-10-31 | 39 |  |  | 0d |  | Manager 2 | 9h |  |
| 41 | 1.15.3.6 | Testing 3 |  | 1.5d | 2011-10-31 | 2011-11-14 | 40 |  |  | 0d |  | Manager 2 | 9h |  |
| 42 | 1.15.4 | IT Support |  | 8.67d | 2011-08-01 A | 2011-11-14 | 2 | 60% | 3.47d | 0d |  | Manager 3 [65%] | 33.8h | 20.28h |
| 43 | 1.15.5 | Project Status Tracking |  | 8.67d | 2011-08-01 A | 2011-11-14 | 2 | 31% | 5.98d | 0d |  | Manager 3 [25%] | 13h | 4.03h |
| 44 | 1.15.6 | Team Meeting Planning |  | 8.67d | 2011-08-01 | 2011-11-14 | 2 |  |  | 0d |  | Manager 3 [10%] | 5.2h |  |
