Schedule from MS Project, 2011-08-01 to 2011-11-14, 6 hours a day, A marks actual dates.

## Calendars

- Laboratorio II: Mon 16:00-22:00; Tue-Sun off. Exceptions (off unless hours are given): 2011-08-15, 2011-08-22, 2011-10-10.

## Resources

| Resource | Group |
| --- | --- |
| Damian | developers |
| Pablo | developers |
| Martin | developers |
| Daniel |  |
| Tomas |  |
| Mariano |  |
| Agustin |  |

## Schedule

| ID | WBS | Task | Type | Duration | Start | Finish | Predecessors | Complete | Remaining | Total slack | Free slack | Constraint | Deadline | Resources | Work | Actual work |
| --- | --- | --- | --- | --- | --- | --- | --- | --- | --- | --- | --- | --- | --- | --- | --- | --- |
| 1 | 1 | **Qnet** |  | 13d? | 2011-08-01 09:00 A | 2011-11-14 22:00 |  | 85% | 1.98d? | 0d |  |  | 2011-11-14 22:00 |  | 397.1h | 345.5h |
| 2 | 1.1 | Project start | milestone | 0d | 2011-08-01 09:00 | 2011-08-01 09:00 |  |  |  | 9.33d | 0.33d |  |  |  |  |  |
| 3 | 1.2 | **Setting enviroment** |  | 3.83d | 2011-08-01 16:00 A | 2011-09-05 21:00 A |  | 100% |  |  |  |  |  |  | 69h | 69h |
| 4 | 1.2.1 | Asignacion de Recursos |  | 0.33d | 2011-08-01 16:00 A | 2011-08-01 18:00 A | 2 | 100% |  |  |  |  |  | Damian; Pablo; Martin | 6h | 6h |
| 5 | 1.2.2 | Capacitación |  | 1.5d | 2011-08-01 18:00 A | 2011-09-05 21:00 A | 4 | 100% |  |  |  |  |  | Damian; Pablo; Martin | 27h | 27h |
| 6 | 1.2.3 | Set enviroment |  | 2d | 2011-08-08 16:00 A | 2011-08-29 22:00 A | 4FS+4h | 100% |  |  |  | start no earlier than 2011-08-07 16:00 |  | Damian; Pablo; Martin | 36h | 36h |
| 7 | 1.3 | Sprint 1 y 2 Planning Meeting |  | 0.17d | 2011-09-05 21:00 A | 2011-09-05 22:00 | 3 | 50% | 0.08d | 9d |  |  |  | Damian; Pablo; Martin | 3h | 1.5h |
| 8 | 1.4 | **Sprint 1 - Privacy & Security** |  | 1d | 2011-09-12 16:00 A | 2011-09-12 22:00 A | 7 | 100% |  |  |  |  |  |  | 15h | 15h |
| 9 | 1.4.1 | **Privacy tasks** |  | 0.33d | 2011-09-12 16:00 A | 2011-09-12 18:00 A |  | 100% |  |  |  |  |  |  | 4h | 4h |
| 10 | 1.4.1.1 | Verify terms and conditions approval |  | 0.33d | 2011-09-12 16:00 A | 2011-09-12 18:00 A |  | 100% |  |  |  |  |  | Martin; Damian | 4h | 4h |
| 11 | 1.4.2 | **Security Improvements** |  | 1d | 2011-09-12 16:00 A | 2011-09-12 22:00 A |  | 100% |  |  |  |  |  |  | 11h | 11h |
| 12 | 1.4.2.1 | Sql injection check |  | 0.42d | 2011-09-12 18:30 A | 2011-09-12 21:00 A | 9 | 100% |  |  |  |  |  | Martin; Damian | 5h | 5h |
| 13 | 1.4.2.2 | Captcha check |  | 1d | 2011-09-12 16:00 A | 2011-09-12 22:00 A | 7 | 100% |  |  |  |  |  | Pablo | 6h | 6h |
| 14 | 1.5 | End Sprint 1 | milestone | 0d | 2011-09-12 22:00 | 2011-09-12 22:00 | 11, 9 |  |  | 8d |  |  |  |  |  |  |
| 15 | 1.6 | **Sprint 2 - Social improvements** |  | 2d | 2011-09-19 16:00 A | 2011-09-26 22:00 A | 14 | 100% |  |  |  |  |  |  | 24h | 24h |
| 16 | 1.6.1 | User popularity ranking |  | 2d | 2011-09-19 16:00 A | 2011-09-26 22:00 A |  | 100% |  |  |  |  |  | Damian | 12h | 12h |
| 17 | 1.6.2 | Instant messages |  | 1d | 2011-09-26 16:00 A | 2011-09-26 22:00 A |  | 100% |  |  |  | start no earlier than 2011-09-26 16:00 |  | Pablo; Martin | 12h | 12h |
| 18 | 1.7 | **Integracion Sprint 1 y 2** |  | 1.17d | 2011-10-03 16:00 A | 2011-10-17 17:00 A | 15 | 100% |  |  |  |  |  |  | 18h | 18h |
| 19 | 1.7.1 | Tests Sprint 1 y 2 |  | 0.25d | 2011-10-03 16:00 A | 2011-10-03 17:30 A |  | 100% |  |  |  |  |  | Martin; Damian; Pablo | 4.5h | 4.5h |
| 20 | 1.7.2 | Correcciones Sprint 1 y 2 |  | 0.75d | 2011-10-03 18:30 A | 2011-10-17 17:00 A | 19 | 100% |  |  |  |  |  | Martin; Damian; Pablo | 13.5h | 13.5h |
| 21 | 1.8 | Integracion Sprint 1 y 2 | milestone | 0h? | 2011-10-03 16:00 | 2011-10-03 16:00 | 18 |  |  | -1.17d | 0d | must start on 2011-10-03 16:00 |  |  |  |  |
| 22 | 1.9 | Integracion Sprint 1 y 2 | milestone | 0h? | 2011-10-17 22:00 | 2011-10-17 22:00 | 21 |  |  | 0d |  | must finish on 2011-10-17 22:00 |  |  |  |  |
| 23 | 1.10 | End Sprint 2 | milestone | 0d | 2011-10-17 22:00 A | 2011-10-17 22:00 A | 22 | 100% |  |  |  |  |  |  |  |  |
| 24 | 1.11 | Sprint 3 Planning Meeting |  | 0.17d | 2011-10-03 21:00 A | 2011-10-03 22:00 A |  | 100% |  |  |  |  |  | Martin; Damian; Pablo | 3h | 3h |

| ID | WBS | Task | Type | Duration | Start | Finish | Predecessors | Complete | Remaining | Total slack | Free slack | Resources | Work | Actual work |
| --- | --- | --- | --- | --- | --- | --- | --- | --- | --- | --- | --- | --- | --- | --- |
| 25 | 1.12 | **Sprint 3 - Miscellaneous** |  | 1d | 2011-10-17 17:00 A | 2011-10-24 17:00 A | 24FS+1h | 100% |  |  |  |  | 18h | 18h |
| 26 | 1.12.1 | Password recovery |  | 1d | 2011-10-17 17:00 A | 2011-10-24 17:00 A | 24 | 100% |  |  |  | Martin | 6h | 6h |
| 27 | 1.12.2 | Recommend to a friend |  | 1d | 2011-10-17 17:00 A | 2011-10-24 17:00 A |  | 100% |  |  |  | Pablo; Damian | 12h | 12h |
| 28 | 1.13 | **Integracion Sprint 3** |  | 0.5d? | 2011-10-24 16:00 A | 2011-10-24 19:00 | 25 | 99% | 0d? | 3.5d |  |  | 15h | 15h |
| 29 | 1.13.1 | Integracion Sprint 3 | milestone | 0h? | 2011-10-24 17:00 | 2011-10-24 17:00 |  |  |  | 3.83d |  |  |  |  |
| 30 | 1.13.2 | Integracion Sprint 3 | milestone | 0h? | 2011-10-24 17:00 | 2011-10-24 17:00 |  |  |  | 3.83d |  |  |  |  |
| 31 | 1.13.3 | Tests Sprint 3 |  | 0.5d | 2011-10-24 16:00 A | 2011-10-24 19:00 A |  | 100% |  |  |  | Damian; Pablo; Martin | 9h | 9h |
| 32 | 1.13.4 | Correcciones Sprint 3 |  | 2h | 2011-10-24 16:00 A | 2011-10-24 18:00 A |  | 100% |  |  |  | Martin; Damian; Pablo | 6h | 6h |
| 33 | 1.14 | **Sprint 4** |  | 1.93d? | 2011-10-31 16:12 A | 2011-11-07 21:45 A |  | 100% |  |  |  |  | 9h | 9h |
| 34 | 1.14.1 | Sprint start | milestone | 0h? | 2011-10-31 16:12 A | 2011-10-31 16:12 A |  | 100% |  |  |  |  |  |  |
| 35 | 1.14.2 | Retrospective Sprint 3 |  | 0.25h? | 2011-10-31 16:12 A | 2011-10-31 16:27 A | 34 | 100% |  |  |  | Damian; Martin; Pablo | 0.75h | 0.75h |
| 36 | 1.14.3 | Respond message |  | 2.75h | 2011-10-31 16:12 A | 2011-10-31 18:57 A | 35 | 100% |  |  |  | Damian; Pablo | 5.5h | 5.5h |
| 37 | 1.14.4 | Message Date |  | 2.75h | 2011-10-31 16:12 A | 2011-10-31 18:57 A |  | 100% |  |  |  | Martin | 2.75h | 2.75h |
| 38 | 1.14.5 | Bug fixing gap |  | 6h? | 2011-10-31 21:45 A | 2011-11-07 21:45 A | 37 | 100% |  |  |  |  |  |  |
| 39 | 1.15 | **After Sprint 4** |  | 0.67d? | 2011-11-07 21:45 | 2011-11-14 19:45 |  |  |  | 0.38d |  |  | 12.6h |  |
| 40 | 1.15.1 | Regressive testing |  | 1h | 2011-11-07 21:45 | 2011-11-14 18:45 | 38 |  |  | 0.54d |  | Tomas | 1h |  |
| 41 | 1.15.2 | Testing message answer |  | 1h | 2011-11-07 21:45 | 2011-11-14 18:45 | 38 |  |  | 0.54d |  | Agustin | 1h |  |
| 42 | 1.15.3 | Testing message date |  | 1h | 2011-11-07 21:45 | 2011-11-14 18:45 | 38 |  |  | 0.38d | 0d | Mariano | 1h |  |
| 43 | 1.15.4 | Correcciones de sprint 4 |  | 1h | 2011-11-14 18:45 | 2011-11-14 19:45 | 42 |  |  | 0.38d |  | Damian; Martin; Pablo | 3h |  |
| 44 | 1.15.5 | Bug Fixing |  | 2h? | 2011-11-07 21:45 | 2011-11-14 17:45 | 38 |  |  | 0.68d | 0d | Damian; Pablo; Martin | 6h |  |
| 45 | 1.15.6 | Release Meeting |  | 0.03d | 2011-11-14 17:45 | 2011-11-14 17:57 | 44 |  |  | 0.68d |  | Damian; Pablo; Martin | 0.6h |  |
| 46 | 1.16 | Entrega Final (fin) | milestone | 0d | 2011-08-01 09:00 | 2011-08-01 09:00 |  |  |  | 13d |  |  |  |  |
| 47 | 1.17 | **Management** |  | 12.67d? | 2011-08-01 18:00 A | 2011-11-14 22:00 |  | 82% | 2.31d? | 0d |  |  | 186.5h | 149h |
| 48 | 1.17.1 | Project Management |  | 8d | 2011-08-01 18:00 A | 2011-11-14 22:00 | 2 | 81% | 1.5d | 0d |  | Daniel | 48h | 39h |
| 49 | 1.17.2 | Reserva Managers |  | 8d | 2011-08-01 18:00 A | 2011-11-14 22:00 | 2 | 59% | 3.25d | 0d |  | Tomas | 48h | 28.5h |
| 50 | 1.17.3 | Reserva Mariano |  | 7h | 2011-08-01 18:00 A | 2011-08-08 21:00 |  | 36% | 4.5h | 11.17d |  | Mariano | 7h | 2.5h |

| ID | WBS | Task | Type | Duration | Start | Finish | Predecessors | Complete | Remaining | Total slack | Constraint | Resources | Work | Actual work |
| --- | --- | --- | --- | --- | --- | --- | --- | --- | --- | --- | --- | --- | --- | --- |
| 51 | 1.17.4 | **Testing** |  | 9.67d? | 2011-09-05 18:00 A | 2011-11-14 22:00 | 3 | 94% | 0.54d? | 0d |  |  | 27h | 25.5h |
| 52 | 1.17.4.1 | Testing | milestone | 0h? | 2011-09-05 21:00 | 2011-09-05 21:00 |  |  |  | 9.17d |  |  |  |  |
| 53 | 1.17.4.2 | Definición de casos de prueba 1 |  | 1.33d? | 2011-09-05 18:00 A | 2011-09-12 22:00 A |  | 100% |  |  | start no earlier than 2011-09-05 16:00 | Mariano | 8h | 8h |
| 54 | 1.17.4.3 | Testing 1 |  | 0.67d | 2011-09-26 18:00 A | 2011-09-26 22:00 A | 53 | 100% |  |  | start no earlier than 2011-09-26 16:00 | Mariano | 4h | 4h |
| 55 | 1.17.4.4 | Definición de casos de prueba 2 |  | 0.33d? | 2011-10-03 18:00 A | 2011-10-03 20:00 A | 54 | 100% |  |  | start no earlier than 2011-09-26 16:00 | Mariano | 2h | 2h |
| 56 | 1.17.4.5 | Testing 2 |  | 0.33d | 2011-10-03 18:00 A | 2011-10-03 20:00 A |  | 100% |  |  | start no earlier than 2011-10-03 16:00 | Mariano | 2h | 2h |
| 57 | 1.17.4.6 | Definición de casos de prueba 3 |  | 0.67d? | 2011-10-17 18:00 A | 2011-10-17 22:00 A | 56 | 100% |  |  | start no earlier than 2011-10-17 16:00 | Mariano | 4h | 4h |
| 58 | 1.17.4.7 | Testing 3 |  | 0.67d | 2011-10-24 18:00 A | 2011-10-24 22:00 A | 57 | 100% |  |  | start no earlier than 2011-10-24 16:00 | Mariano | 4h | 4h |
| 59 | 1.17.4.8 | Definición de casos de prueba 4 |  | 1.5h | 2011-10-31 18:00 A | 2011-10-31 19:30 A | 58 | 100% |  |  |  | Mariano | 1.5h | 1.5h |
| 60 | 1.17.4.9 | Testing 4 |  | 1.5h | 2011-11-14 20:30 | 2011-11-14 22:00 | 59 |  |  | 0d | as late as possible | Mariano | 1.5h |  |
| 61 | 1.17.5 | IT Support |  | 8.21d | 2011-08-01 18:00 A | 2011-11-14 19:13 A | 2 | 100% |  |  |  | Agustin [65%] | 32h | 32h |
| 62 | 1.17.6 | IT Support |  | 4h? | 2011-08-01 18:00 A | 2011-08-01 22:00 A |  | 100% |  |  |  | Daniel | 4h | 4h |
| 63 | 1.17.7 | IT Support |  | 2.5h | 2011-08-01 18:00 A | 2011-08-01 20:30 A |  | 100% |  |  |  | Tomas | 2.5h | 2.5h |
| 64 | 1.17.8 | Project Status Tracking |  | 8.67d | 2011-08-01 18:00 A | 2011-11-14 22:00 | 2 | 85% | 1.33d | 0d |  | Agustin [25%] | 13h | 11h |
| 65 | 1.17.9 | Team Meeting Planning |  | 8.33d | 2011-08-01 18:00 A | 2011-11-14 20:00 | 2 | 80% | 1.67d | 0.33d |  | Agustin [10%] | 5h | 4h |
| 66 | 1.18 | **Faltas y tiempo improductivo** |  | 1d? | 2011-09-19 16:00 A | 2011-09-19 22:00 A |  | 100% |  |  |  |  | 24h | 24h |
| 67 | 1.18.1 | Google Developers Day |  | 6h? | 2011-09-19 16:00 A | 2011-09-19 22:00 A | 14 | 100% |  |  |  | Daniel; Mariano; Martin; Pablo; Tomas | 24h | 24h |
