Schedule from MS Project, 2011-08-01 to 2011-11-14, 6 hours a day, A marks actual dates.

## Calendars

- Laboratorio II: Mon 16:00-22:00; Tue-Sun off. Exceptions (off unless hours are given): 2011-08-15, 2011-08-22, 2011-10-10.

## Resources

| Resource | Group |
| --- | --- |
| Damian | developers |
| Pablo | developers |
| Martin | developers |
| Daniel |  |
| Tomas |  |
| Mariano |  |
| Agustin |  |

## Schedule

| ID | WBS | Task | Type | Duration | Start | Finish | Predecessors | Complete | Remaining | Total slack | Free slack | Constraint | Deadline | Resources | Work | Actual work |
| --- | --- | --- | --- | --- | --- | --- | --- | --- | --- | --- | --- | --- | --- | --- | --- | --- |
| 1 | 1 | **Qnet** |  | 13d? | 2011-08-01 09:00 A | 2011-11-14 22:00 |  | 51% | 6.36d? | 0d |  |  | 2011-11-14 22:00 |  | 424.8h | 224.17h |
| 2 | 1.1 | Project start | milestone | 0d | 2011-08-01 09:00 | 2011-08-01 09:00 |  |  |  | 7.19d | 0.33d |  |  |  |  |  |
| 3 | 1.2 | **Setting enviroment** |  | 3.83d | 2011-08-01 16:00 A | 2011-09-05 21:00 A |  | 100% |  |  |  |  |  |  | 69h | 69h |
| 4 | 1.2.1 | Asignacion de Recursos |  | 0.33d | 2011-08-01 16:00 A | 2011-08-01 18:00 A | 2 | 100% |  |  |  |  |  | Damian; Pablo; Martin | 6h | 6h |
| 5 | 1.2.2 | Capacitación |  | 1.5d | 2011-08-01 18:00 A | 2011-09-05 21:00 A | 4 | 100% |  |  |  |  |  | Damian; Pablo; Martin | 27h | 27h |
| 6 | 1.2.3 | Set enviroment |  | 2d | 2011-08-08 16:00 A | 2011-08-29 22:00 A | 4FS+4h | 100% |  |  |  | start no earlier than 2011-08-07 16:00 |  | Damian; Pablo; Martin | 36h | 36h |
| 7 | 1.3 | Sprint 1 y 2 Planning Meeting |  | 0.17d | 2011-09-05 21:00 A | 2011-09-05 22:00 | 3 | 50% | 0.08d | 9d |  |  |  | Damian; Pablo; Martin | 3h | 1.5h |
| 8 | 1.4 | **Sprint 1 - Privacy & Security** |  | 1d | 2011-09-12 16:00 A | 2011-09-12 22:00 A | 7 | 100% |  |  |  |  |  |  | 15h | 15h |
| 9 | 1.4.1 | **Privacy tasks** |  | 0.33d | 2011-09-12 16:00 A | 2011-09-12 18:00 A |  | 100% |  |  |  |  |  |  | 4h | 4h |
| 10 | 1.4.1.1 | Verify terms and conditions approval |  | 0.33d | 2011-09-12 16:00 A | 2011-09-12 18:00 A |  | 100% |  |  |  |  |  | Martin; Damian | 4h | 4h |
| 11 | 1.4.2 | **Security Improvements** |  | 1d | 2011-09-12 16:00 A | 2011-09-12 22:00 A |  | 100% |  |  |  |  |  |  | 11h | 11h |
| 12 | 1.4.2.1 | Sql injection check |  | 0.42d | 2011-09-12 18:30 A | 2011-09-12 21:00 A | 9 | 100% |  |  |  |  |  | Martin; Damian | 5h | 5h |
| 13 | 1.4.2.2 | Captcha check |  | 1d | 2011-09-12 16:00 A | 2011-09-12 22:00 A | 7 | 100% |  |  |  |  |  | Pablo | 6h | 6h |
| 14 | 1.5 | End Sprint 1 | milestone | 0d | 2011-09-12 22:00 | 2011-09-12 22:00 | 11, 9 |  |  | 8d |  |  |  |  |  |  |
| 15 | 1.6 | **Sprint 2 - Social improvements** |  | 2d | 2011-09-19 16:00 A | 2011-09-26 22:00 A | 14 | 100% |  |  |  |  |  |  | 24h | 24h |
| 16 | 1.6.1 | User popularity ranking |  | 2d | 2011-09-19 16:00 A | 2011-09-26 22:00 A |  | 100% |  |  |  |  |  | Damian | 12h | 12h |
| 17 | 1.6.2 | Instant messages |  | 1d | 2011-09-26 16:00 A | 2011-09-26 22:00 A |  | 100% |  |  |  | start no earlier than 2011-09-26 16:00 |  | Pablo; Martin | 12h | 12h |
| 18 | 1.7 | **Integracion Sprint 1 y 2** |  | 0.83d | 2011-10-03 16:00 | 2011-10-03 21:00 | 15 |  |  | 0d |  |  |  |  | 15h |  |
| 19 | 1.7.1 | Tests Sprint 1 y 2 |  | 0.42d | 2011-10-03 16:00 | 2011-10-03 18:30 |  |  |  | 0d |  |  |  | Martin; Damian; Pablo | 7.5h |  |
| 20 | 1.7.2 | Correcciones Sprint 1 y 2 |  | 0.42d | 2011-10-03 18:30 | 2011-10-03 21:00 | 19 |  |  | 0d |  |  |  | Martin; Damian; Pablo | 7.5h |  |
| 21 | 1.8 | End Sprint 2 | milestone | 0d | 2011-10-03 21:00 | 2011-10-03 21:00 | 18 |  |  | 5.17d |  |  |  |  |  |  |
| 22 | 1.9 | Sprint 3 Planning Meeting |  | 0.17d | 2011-10-03 21:00 | 2011-10-03 22:00 | 18 |  |  | 0d |  |  |  | Martin; Damian; Pablo | 3h |  |
| 23 | 1.10 | **Sprint 3 - Miscellaneous** |  | 1.5d | 2011-10-17 16:00 | 2011-10-24 19:00 | 22 |  |  | 0d |  |  |  |  | 27h |  |
| 24 | 1.10.1 | Password recovery |  | 1.5d | 2011-10-17 16:00 | 2011-10-24 19:00 |  |  |  | 0d |  |  |  | Martin | 9h |  |
| 25 | 1.10.2 | Recommend to a friend |  | 1.5d | 2011-10-17 16:00 | 2011-10-24 19:00 |  |  |  | 0d |  |  |  | Pablo; Damian | 18h |  |

| ID | WBS | Task | Type | Duration | Start | Finish | Predecessors | Complete | Remaining | Actual start | Total slack | Constraint | Resources | Work | Actual work |
| --- | --- | --- | --- | --- | --- | --- | --- | --- | --- | --- | --- | --- | --- | --- | --- |
| 26 | 1.11 | **Integracion Sprint 3** |  | 1.17d | 2011-10-24 19:00 | 2011-10-31 20:00 | 23 |  |  |  | 0d |  |  | 21h |  |
| 27 | 1.11.1 | Tests Sprint 3 |  | 0.58d | 2011-10-24 19:00 | 2011-10-31 16:30 |  |  |  |  | 0d |  | Damian; Pablo; Martin | 10.5h |  |
| 28 | 1.11.2 | Correcciones Sprint 3 |  | 0.58d | 2011-10-31 16:30 | 2011-10-31 20:00 | 27 |  |  |  | 0d |  | Damian; Pablo; Martin | 10.5h |  |
| 29 | 1.12 | Release Meeting |  | 0.33d | 2011-10-31 20:00 | 2011-10-31 22:00 | 26 |  |  |  | 0d |  | Damian; Pablo; Martin | 6h |  |
| 30 | 1.13 | Reserva Developers |  | 2d | 2011-11-07 16:00 | 2011-11-14 22:00 | 29 |  |  |  | 0d |  | Damian; Pablo; Martin | 36h |  |
| 31 | 1.14 | Entrega Final (fin) | milestone | 0d | 2011-11-14 16:00 | 2011-11-14 16:00 |  |  |  |  | 1d | start no earlier than 2011-11-14 16:00 |  |  |  |
| 32 | 1.15 | **Management** |  | 12.67d | 2011-08-01 18:00 A | 2011-11-14 22:00 |  | 49% | 6.42d |  | 0d |  |  | 181.8h | 90.67h |
| 33 | 1.15.1 | Project Management |  | 8d | 2011-08-01 18:00 A | 2011-11-14 22:00 | 2 | 45% | 4.4d |  | 0d | finish no earlier than 2011-11-14 22:00 | Daniel | 48h | 21.6h |
| 34 | 1.15.2 | Reserva Managers |  | 8d | 2011-08-01 18:00 A | 2011-11-14 22:00 | 2 | 45% | 4.4d |  | 0d | finish no earlier than 2011-11-14 22:00 | Tomas | 48h | 21.6h |
| 35 | 1.15.3 | **Testing** |  | 9.17d | 2011-09-05 21:00 | 2011-11-14 22:00 | 3 | 33% | 6.11d | 2011-09-05 18:00 |  |  |  | 36h | 12h |
| 36 | 1.15.3.1 | Definición de casos de prueba 1 |  | 1.33d? | 2011-09-05 18:00 A | 2011-09-12 22:00 A |  | 100% |  |  |  | start no earlier than 2011-09-05 16:00 | Mariano | 8h | 8h |
| 37 | 1.15.3.2 | Testing 1 |  | 0.67d | 2011-09-26 18:00 A | 2011-09-26 22:00 A | 36 | 100% |  |  |  | start no earlier than 2011-09-26 16:00 | Mariano | 4h | 4h |
| 38 | 1.15.3.3 | Definición de casos de prueba 2 |  | 1.33d? | 2011-10-03 18:00 | 2011-10-17 22:00 | 37 |  |  |  | 0d | start no earlier than 2011-09-26 16:00 | Mariano | 8h |  |
| 39 | 1.15.3.4 | Testing 2 |  | 0.67d | 2011-10-24 18:00 | 2011-10-24 22:00 | 38 |  |  |  | 0d | start no earlier than 2011-10-03 16:00 | Mariano | 4h |  |
| 40 | 1.15.3.5 | Definición de casos de prueba 3 |  | 1.33d? | 2011-10-31 18:00 | 2011-11-07 22:00 | 39 |  |  |  | 0d | start no earlier than 2011-10-24 16:00 | Mariano | 8h |  |
| 41 | 1.15.3.6 | Testing 3 |  | 0.67d | 2011-11-14 18:00 | 2011-11-14 22:00 | 40 |  |  |  | 0d | finish no earlier than 2011-11-14 22:00 | Mariano | 4h |  |
| 42 | 1.15.4 | IT Support |  | 7.44d | 2011-08-01 18:00 A | 2011-11-14 18:36 | 2 | 85% | 1.12d |  | 0.56d |  | Agustin [65%] | 29h | 24.65h |
| 43 | 1.15.5 | Project Status Tracking |  | 8.67d | 2011-08-01 18:00 A | 2011-11-14 22:00 | 2 | 50% | 4.33d |  | 0d |  | Agustin [25%] | 13h | 6.5h |
| 44 | 1.15.6 | Team Meeting Planning |  | 8.67d | 2011-08-01 18:00 A | 2011-11-14 21:59 | 2 | 33% | 5.81d |  | 0d |  | Agustin [10%] | 5.2h | 1.72h |
| 45 | 1.15.7 | Exceptional Bug Fixing for ES 26.9 |  | 4h | 2011-09-26 18:00 A | 2011-09-26 22:00 A | 2 | 100% |  |  |  | start no earlier than 2011-09-26 16:00 | Agustin [65%] | 2.6h | 2.6h |
| 46 | 1.16 | **Faltas y tiempo improductivo** |  | 1d? | 2011-09-19 16:00 A | 2011-09-19 22:00 A |  | 100% |  |  |  |  |  | 24h | 24h |
| 47 | 1.16.1 | Google Developers Day |  | 6h? | 2011-09-19 16:00 A | 2011-09-19 22:00 A | 14 | 100% |  |  |  |  | Daniel; Mariano; Martin; Pablo; Tomas | 24h | 24h |
